# 项目规划_于喜梅

Schedule from MS Project, 2020-09-13 to 2020-11-05, costs in ¥.
Microsoft

## Calendars

- 标准: Mon-Fri 08:00-12:00, 13:00-17:00; Sat-Sun off. Exceptions (off unless hours are given): 2020-09-01 to 2020-11-10 (星期二不上班, recurring), 2020-09-06 to 2020-11-08 08:00-12:00, 13:00-17:00 (星期日上班, recurring).

## Resources

| Resource | Rate |
| --- | --- |
| 项目经理 | 20 |
| UI专家 | 17 |
| 需求专家 | 17 |
| 质量专家 | 17 |
| 设计专家 | 17 |
| 程序员1 | 15 |
| 程序员2 | 15 |
| 程序员3 | 15 |
| 测试员1 | 12 |
| 测试员2 | 12 |

## Schedule

| ID | WBS | Task | Type | Duration | Start | Finish | Predecessors | Resources | Work | Cost |
| --- | --- | --- | --- | --- | --- | --- | --- | --- | --- | --- |
| 1 | 1 | **启动** |  | 3d | 2020-09-13 | 2020-09-16 |  |  | 65.07h | 1,117.33 |
| 2 | 1.1 | 组建核心团队 | manual | 1d | 2020-09-13 | 2020-09-13 |  | 项目经理 [30%]; UI专家; 设计专家; 需求专家 [50%]; 质量专家 | 30.4h | 524 |
| 3 | 1.2 | 干系人分析 | milestone, manual | 0d | 2020-09-13 | 2020-09-13 |  | 项目经理 [30%]; 需求专家 [50%] |  |  |
| 4 | 1.3 | 里程碑计划 | manual | 1d | 2020-09-16 | 2020-09-16 |  | 项目经理 [50%] | 4h | 80 |
| 5 | 1.4 | 制定项目章程 | manual | 1d | 2020-09-14 | 2020-09-14 | 2, 3, 4 | 项目经理 | 2.67h | 53.33 |
| 6 | 1.5 | 项目启动大会 | manual | 1d | 2020-09-16 | 2020-09-16 | 5 | 项目经理 [50%]; UI专家 [50%]; 需求专家 [50%]; 质量专家 [50%]; 设计专家 [50%]; 程序员1 [50%]; 测试员1 [50%] | 28h | 460 |
| 7 | 2 | **规划** |  | 18d | 2020-09-16 | 2020-10-09 |  |  | 139.8h | 2,604 |
| 8 | 2.1 | **规划范围** |  | 5d | 2020-09-17 | 2020-09-23 |  |  | 44h | 784 |
| 9 | 2.1.1 | 制定需求说明书 | manual | 1d | 2020-09-17 | 2020-09-17 | 6 | 需求专家 | 8h | 136 |
| 10 | 2.1.2 | 界面设计 | manual | 2d | 2020-09-18 | 2020-09-20 | 9 | 设计专家 | 16h | 272 |
| 11 | 2.1.3 | 详细设计说明书 | manual | 1d | 2020-09-21 | 2020-09-21 | 10 | 设计专家 | 8h | 136 |
| 12 | 2.1.4 | 项目范围说明书 | manual | 1d | 2020-09-21 | 2020-09-21 | 10 | 项目经理 | 8h | 160 |
| 13 | 2.1.5 | 创建WBS | manual | 1d | 2020-09-23 | 2020-09-23 | 10, 11, 12 | 项目经理 [50%] | 4h | 80 |
| 14 | 2.1.6 | 形成范围基准 | manual | 1d | 2020-09-23 | 2020-09-23 | 12 |  |  |  |
| 15 | 2.2 | **规划时间** |  | 5d | 2020-09-23 | 2020-09-28 |  |  | 10.4h | 208 |
| 16 | 2.2.1 | 估算资源 | manual | 1d | 2020-09-24 | 2020-09-24 | 13 | 项目经理 [50%] | 4h | 80 |
| 17 | 2.2.2 | 估算持续时间 | manual | 1d | 2020-09-24 | 2020-09-25 | 13 | 项目经理 [20%] | 1.6h | 32 |
| 18 | 2.2.3 | 制定进度计划 | manual | 2d | 2020-09-25 | 2020-09-27 | 17 | 项目经理 [20%] | 3.2h | 64 |
| 19 | 2.2.4 | 形成进度基准 | manual | 1d | 2020-09-28 | 2020-09-28 | 18 | 项目经理 [20%] | 1.6h | 32 |
| 20 | 2.3 | **规划成本** |  | 4d | 2020-09-24 | 2020-09-29 |  |  | 4.8h | 96 |
| 21 | 2.3.1 | 项目成本估算 | manual | 1d | 2020-09-24 | 2020-09-25 | 14 | 项目经理 [20%] | 1.6h | 32 |
| 22 | 2.3.2 | 项目预算 | manual | 1d | 2020-09-25 | 2020-09-25 | 21 | 项目经理 [20%] | 1.6h | 32 |
| 23 | 2.3.3 | 行成范围基准 | manual | 1d | 2020-09-28 | 2020-09-28 | 22 | 项目经理 [20%] | 1.6h | 32 |
| 24 | 2.4 | **规划质量** |  | 3d | 2020-09-30 | 2020-10-02 |  |  | 24h | 408 |
| 25 | 2.4.1 | 制定测试计划 | manual | 2d | 2020-09-30 | 2020-10-01 | 23 | 质量专家 | 16h | 272 |
| 26 | 2.4.2 | 指定测试用例 | manual | 1d | 2020-10-02 | 2020-10-02 | 25 | 质量专家 | 8h | 136 |

| ID | WBS | Task | Type | Duration | Start | Finish | Predecessors | Total slack | Free slack | Constraint | Resources | Work | Cost |
| --- | --- | --- | --- | --- | --- | --- | --- | --- | --- | --- | --- | --- | --- |
| 27 | 2.5 | **规划人力资源** |  | 3.12d | 2020-09-29 | 2020-10-02 |  |  |  |  |  | 17.6h | 328 |
| 28 | 2.5.1 | 制定人力资源计划 | manual | 1d | 2020-09-30 | 2020-09-30 | 19 |  |  |  | 需求专家; 项目经理 [20%] | 9.6h | 168 |
| 29 | 2.5.2 | 制定人力配备管理计划 | manual | 1d | 2020-10-01 | 2020-10-01 | 28 |  |  |  | 项目经理 | 8h | 160 |
| 30 | 2.6 | **规划沟通** |  | 1d | 2020-10-02 | 2020-10-03 |  |  |  |  |  | 4h | 80 |
| 31 | 2.6.1 | 制定沟通管理计划 | manual | 1d | 2020-10-02 | 2020-10-02 | 29 |  |  |  | 项目经理 [50%] | 4h | 80 |
| 32 | 2.7 | **规划采购** |  | 3d | 2020-10-02 | 2020-10-06 |  |  |  |  |  | 8h | 160 |
| 33 | 2.7.1 | 自制外购计划 | manual | 1d | 2020-10-02 | 2020-10-02 | 23, 29 |  |  |  | 项目经理 [50%] | 4h | 80 |
| 34 | 2.7.2 | 制定采购文件 |  | 1d | 2020-10-05 | 2020-10-05 | 33 | 21d |  | finish no earlier than 2020-10-05 | 项目经理 [50%] | 4h | 80 |
| 35 | 2.8 | **规划风险** |  | 3d | 2020-10-05 | 2020-10-08 |  | -0.75d | 0d |  |  | 19h | 380 |
| 36 | 2.8.1 | 识别风险 | manual | 1d | 2020-10-05 | 2020-10-05 | 26, 13, 24 |  |  |  | 项目经理 [50%] | 4h | 80 |
| 37 | 2.8.2 | 风险分析 |  | 0.88d | 2020-10-07 | 2020-10-07 | 36 | -0.75d | 0d | finish no earlier than 2020-10-07 | 项目经理 | 7h | 140 |
| 38 | 2.8.3 | 制定风险登记册 |  | 1d | 2020-10-08 | 2020-10-08 | 37 | -0.75d | 0d |  | 项目经理 | 8h | 160 |
| 39 | 2.9 | 规划整合 | milestone | 1d | 2020-10-09 | 2020-10-09 | 38 | -0.75d | 0d |  | 项目经理 | 8h | 160 |
| 40 | 3 | **执行与监控** |  | 19d | 2020-10-11 | 2020-11-05 |  |  |  |  |  | 602.24h | 9,701.1 |
| 41 | 3.1 | 组建项目团队 | manual | 1d | 2020-10-09 | 2020-10-09 | 39 |  |  |  | 项目经理; 需求专家; 质量专家; 设计专家; UI专家; 程序员1; 程序员2; 程序员3; 测试员1; 测试员2 | 80h | 1,256 |
| 42 | 3.2 | **项目执行** |  | 14d | 2020-10-11 | 2020-10-29 |  |  |  |  |  | 167.76h | 2,516.4 |
| 43 | 3.2.1 | **首页模块** |  | 6d | 2020-10-11 | 2020-10-18 |  |  |  |  |  | 36.8h | 552 |
| 44 | 3.2.1.1 | 笔记展示 | manual | 4d | 2020-10-11 | 2020-10-16 |  |  |  |  | 程序员1 [90%] | 28.8h | 432 |
| 45 | 3.2.1.2 | 搜索笔记 | manual | 2d | 2020-10-16 | 2020-10-18 | 44 |  |  |  | 程序员1 [50%] | 8h | 120 |
| 46 | 3.2.2 | **用户模块** |  | 13d | 2020-10-11 | 2020-10-28 |  |  |  |  |  | 49.2h | 738 |
| 47 | 3.2.2.1 | 注册登录 | manual | 2d | 2020-10-11 | 2020-10-12 | 41 |  |  |  | 程序员2 [60%] | 9.6h | 144 |
| 48 | 3.2.2.2 | 个人中心 | manual | 5d | 2020-10-14 | 2020-10-21 | 47 |  |  |  | 程序员2 [20%] | 8h | 120 |
| 49 | 3.2.2.3 | 关注 | manual | 2d | 2020-10-21 | 2020-10-23 | 48 |  |  |  | 程序员2 [20%] | 3.2h | 48 |
| 50 | 3.2.2.4 | 发布笔记 | manual | 0.88d | 2020-10-23 | 2020-10-23 | 48 |  |  | finish no earlier than 2020-10-23 | 程序员2 [40%] | 2.8h | 42 |
| 51 | 3.2.2.5 | 发送消息 | manual | 3d | 2020-10-21 | 2020-10-25 | 48 |  |  |  | 程序员2 [40%] | 9.6h | 144 |
| 52 | 3.2.2.6 | 个人设置 | manual | 4d | 2020-10-14 | 2020-10-18 | 47 |  |  |  | 程序员2 [50%] | 16h | 240 |

| ID | WBS | Task | Type | Duration | Start | Finish | Predecessors | Constraint | Resources | Work | Cost |
| --- | --- | --- | --- | --- | --- | --- | --- | --- | --- | --- | --- |
| 53 | 3.2.3 | **笔记模块** |  | 8d | 2020-10-11 | 2020-10-21 |  |  |  | 31.2h | 468 |
| 54 | 3.2.3.1 | 展示笔记详情 | manual | 5d | 2020-10-12 | 2020-10-18 | 41 |  | 程序员3 [50%] | 20h | 300 |
| 55 | 3.2.3.2 | 点赞，收藏笔记 | manual | 1d | 2020-10-19 | 2020-10-19 | 54 |  | 程序员3 [30%] | 2.4h | 36 |
| 56 | 3.2.3.3 | 收藏夹 | manual | 1d | 2020-10-21 | 2020-10-21 | 55 |  | 程序员3 [20%] | 1.6h | 24 |
| 57 | 3.2.3.4 | 评论 | manual | 2d | 2020-10-19 | 2020-10-21 | 54 | finish no earlier than 2020-10-21 | 程序员3 [30%] | 4.8h | 72 |
| 58 | 3.2.3.5 | 关注 | manual | 1d | 2020-10-19 | 2020-10-19 | 54 |  | 程序员3 [30%] | 2.4h | 36 |
| 59 | 3.2.4 | **发现模块** |  | 9d | 2020-10-11 | 2020-10-22 |  |  |  | 18.56h | 278.4 |
| 60 | 3.2.4.1 | 同城笔记展示 | manual | 2d | 2020-10-18 | 2020-10-19 | 44 | start no earlier than 2020-10-18 | 程序员1 [36%] | 5.76h | 86.4 |
| 61 | 3.2.4.2 | 关注用户笔记展示 | manual | 2d | 2020-10-21 | 2020-10-22 | 48, 58 |  | 程序员1 [80%] | 12.8h | 192 |
| 62 | 3.2.5 | **线上旅游模块** |  | 11d | 2020-10-14 | 2020-10-29 |  |  |  | 32h | 480 |
| 63 | 3.2.5.1 | 旅游线路简介 | manual | 5d | 2020-10-14 | 2020-10-21 | 41 |  | 程序员2 [20%] | 8h | 120 |
| 64 | 3.2.5.2 | 线上旅游打卡 | manual | 6d | 2020-10-21 | 2020-10-29 | 63 |  | 程序员3 [50%] | 24h | 360 |
| 65 | 3.3 | **项目监控** |  | 14d | 2020-10-11 | 2020-10-29 |  |  |  | 173.6h | 2,874.4 |
| 66 | 3.3.1 | 各项指标监控 | manual | 4d | 2020-10-21 | 2020-10-26 | 41 |  | 测试员1 [50%]; UI专家 [50%]; 需求专家 [50%]; 质量专家 [50%]; 设计专家 [50%]; 项目经理 [30%] | 89.6h | 1,472 |
| 67 | 3.3.2 | 监控评审 | manual | 1d | 2020-10-28 | 2020-10-28 | 66 |  | UI专家 [50%]; 设计专家 [50%]; 项目经理 [30%]; 需求专家 [50%]; 质量专家 [50%] | 18.4h | 320 |
| 68 | 3.3.3 | 变更评审 | manual | 1d | 2020-10-29 | 2020-10-29 | 67 |  | UI专家 [10%]; 设计专家 [10%]; 项目经理 [10%]; 需求专家 [10%]; 质量专家 [10%] | 4h | 70.4 |
| 69 | 3.3.4 | 例会 | manual | 11d | 2020-10-12 | 2020-10-26 | 41 |  | UI专家 [10%]; 测试员1 [10%]; 程序员1 [10%]; 设计专家 [10%]; 项目经理 [10%]; 需求专家 [10%]; 质量专家 [10%] | 61.6h | 1,012 |
| 70 | 3.4 | **管理干系人** |  | 14d | 2020-10-11 | 2020-10-29 |  |  |  | 44.4h | 888 |
| 71 | 3.4.1 | 发布项目信息 | manual | 1d | 2020-10-28 | 2020-10-28 |  |  | 项目经理 [20%] | 1.6h | 32 |
| 72 | 3.4.2 | 报告监控指标 | manual | 1d | 2020-10-29 | 2020-10-29 | 71 |  | 项目经理 [90%] | 7.2h | 144 |
| 73 | 3.4.3 | 干系人沟通 | manual | 11.12d | 2020-10-12 | 2020-10-26 | 41 |  | 项目经理 [40%] | 35.6h | 712 |
| 74 | 3.5 | **团队建设** |  | 13d | 2020-10-16 | 2020-11-02 |  |  |  | 56.48h | 910.3 |
| 75 | 3.5.1 | 娱乐活动 | manual | 1d | 2020-10-16 | 2020-10-16 |  |  | UI专家 [50%]; 测试员1 [50%]; 测试员2 [50%]; 程序员1 [26%]; 程序员2 [10%]; 程序员3 [50%]; 设计专家 [50%]; 项目经理 [50%]; 需求专家 [50%]; 质量专家 [50%] | 34.88h | 551.2 |
| 76 | 3.5.2 | 项目各功能展示 | manual | 1.12d | 2020-11-02 | 2020-11-02 | 42 |  | UI专家 [30%]; 程序员1 [30%]; 程序员2 [30%]; 程序员3 [30%]; 设计专家 [30%]; 项目经理 [30%]; 需求专家 [30%]; 质量专家 [30%] | 21.6h | 359.1 |

| ID | WBS | Task | Type | Duration | Start | Finish | Predecessors | Constraint | Resources | Work | Cost |
| --- | --- | --- | --- | --- | --- | --- | --- | --- | --- | --- | --- |
| 77 | 3.6 | **收尾** |  | 2d | 2020-11-04 | 2020-11-05 |  |  |  | 80h | 1,256 |
| 78 | 3.6.1 | 项目终验 | manual | 2d | 2020-11-04 | 2020-11-05 | 42, 65, 70, 74 | finish no earlier than 2020-11-04 | UI专家 [50%]; 测试员1 [50%]; 测试员2 [50%]; 程序员1 [50%]; 程序员2 [50%]; 程序员3 [50%]; 设计专家 [50%]; 项目经理 [50%]; 需求专家 [50%]; 质量专家 [50%] | 80h | 1,256 |
