# 项目规划

Schedule from MS Project, 2020-10-15 to 2020-12-03, costs in ¥, A marks actual dates.
Microsoft

## Calendars

- 标准: Mon-Fri 08:00-12:00, 13:00-17:00; Sat-Sun off.

## Resources

| Resource | Rate |
| --- | --- |
| 项目经理（任锐媛） | 200 |
| UI专家（田春雨） | 100 |
| 需求专家（于喜梅） | 100 |
| 质量专家（梁钰钊） | 100 |
| 设计专家（张杰） | 100 |
| 测试员1（姚元玲） | 40 |
| 测试员2（张硕） | 40 |
| 程序员1（任锐媛） | 45 |
| 程序员2（张硕） | 45 |
| 程序员3（田春雨） | 45 |
| 程序员4（于喜梅） | 45 |
| 程序员5（梁钰钊） | 45 |
| 程序员6（张杰） | 45 |
| 程序员7（姚元玲） | 45 |
| 间接成本 |  |
| 储备资金 |  |

## Schedule

| ID | WBS | Task | Type | Duration | Start | Finish | Predecessors | Complete | Remaining | Actual finish | Constraint | Resources | Work | Actual work | Cost | Actual cost |
| --- | --- | --- | --- | --- | --- | --- | --- | --- | --- | --- | --- | --- | --- | --- | --- | --- |
| 1 | 1 | **启动** |  | 5d | 2020-10-15 A | 2020-10-21 |  | 99% | 0d |  |  | 储备资金 [0.1%]; 间接成本 [0.1%] | 256h | 256h | 32,468 | 26,768 |
| 2 | 1.1 | 组件核心团队 | manual | 3d | 2020-10-15 A | 2020-10-17 A |  | 100% |  |  |  | 项目经理（任锐媛）; UI专家（田春雨）; 需求专家（于喜梅）; 质量专家（梁钰钊）; 设计专家（张杰） | 120h | 120h | 14,400 | 14,400 |
| 3 | 1.2 | 干系人分析 | manual | 1d | 2020-10-18 A | 2020-10-18 A |  | 100% |  |  |  | 项目经理（任锐媛） [51%]; 需求专家（于喜梅） [49%] | 8h | 8h | 1,208 | 1,208 |
| 4 | 1.3 | 里程碑计划 | manual | 1d | 2020-10-19 A | 2020-10-19 A |  | 100% |  |  |  | 项目经理（任锐媛） | 8h | 8h | 1,600 | 1,600 |
| 5 | 1.4 | 制定项目章程 | manual | 1d | 2020-10-20 A | 2020-10-20 A | 2, 3, 4 | 100% |  |  |  | 项目经理（任锐媛） | 8h | 8h | 1,600 | 1,600 |
| 6 | 1.5 | 项目启动大会 | manual | 1d | 2020-10-21 A | 2020-10-21 A | 5 | 100% |  |  |  | 项目经理（任锐媛）; 需求专家（于喜梅）; UI专家（田春雨）; 测试员1（姚元玲）; 测试员2（张硕）; 程序员1（任锐媛）; 程序员2（张硕）; 程序员3（田春雨）; 设计专家（张杰）; 质量专家（梁钰钊）; 程序员4（于喜梅）; 程序员5（梁钰钊）; 程序员6（张杰）; 程序员7（姚元玲） | 112h | 112h | 7,960 | 7,960 |
| 7 | 2 | **规划** |  | 13d | 2020-10-22 A | 2020-11-07 |  | 99% | 0d |  |  | 储备资金 [0.1%]; 间接成本 [0.1%] | 104h | 104h | 23,240 | 18,400 |
| 8 | 2.1 | **规划范围** |  | 6d | 2020-10-22 A | 2020-10-30 |  | 100% |  | 2020-10-26 |  |  | 40h | 40h | 5,600 | 5,600 |
| 9 | 2.1.1 | 制定需求说明书 | manual | 1d | 2020-10-22 A | 2020-10-22 A | 6 | 100% |  |  | start no earlier than 2020-10-22 | 需求专家（于喜梅） | 8h | 8h | 800 | 800 |
| 10 | 2.1.2 | UI界面设计 | manual | 1d | 2020-10-23 A | 2020-10-23 A | 9 | 100% |  |  |  | UI专家（田春雨） | 8h | 8h | 800 | 800 |
| 11 | 2.1.3 | 详细设计说明书 | manual | 1d | 2020-10-24 A | 2020-10-24 A | 10 | 100% |  |  |  | 设计专家（张杰） | 8h | 8h | 800 | 800 |
| 12 | 2.1.4 | 形成范围基准 | manual | 2d | 2020-10-25 A | 2020-10-26 A | 11 | 100% |  |  |  | 项目经理（任锐媛） | 16h | 16h | 3,200 | 3,200 |
| 13 | 2.2 | **规划进度** |  | 2d | 2020-10-31 A | 2020-11-01 A |  | 100% |  |  |  |  | 16h | 16h | 3,200 | 3,200 |
| 14 | 2.2.1 | 制定进度计划 | manual | 1d | 2020-10-31 A | 2020-10-31 A | 12 | 100% |  |  |  | 项目经理（任锐媛） | 8h | 8h | 1,600 | 1,600 |
| 15 | 2.2.2 | 形成进度基准 | manual | 1d | 2020-11-01 A | 2020-11-01 A | 14 | 100% |  |  |  | 项目经理（任锐媛） | 8h | 8h | 1,600 | 1,600 |
| 16 | 2.3 | **规划成本** |  | 3d | 2020-11-02 A | 2020-11-04 A |  | 100% |  |  |  |  | 24h | 24h | 4,800 | 4,800 |
| 17 | 2.3.1 | 项目成本估算 | manual | 1d | 2020-11-02 A | 2020-11-02 A |  | 100% |  |  |  | 项目经理（任锐媛） | 8h | 8h | 1,600 | 1,600 |
| 18 | 2.3.2 | 项目预算 | manual | 1d | 2020-11-03 A | 2020-11-03 A |  | 100% |  |  |  | 项目经理（任锐媛） | 8h | 8h | 1,600 | 1,600 |
| 19 | 2.3.3 | 形成范围基准 | manual | 1d | 2020-11-04 A | 2020-11-04 A |  | 100% |  |  |  | 项目经理（任锐媛） | 8h | 8h | 1,600 | 1,600 |
| 20 | 2.4 | **规划风险** |  | 3d | 2020-11-05 A | 2020-11-07 A |  | 100% |  |  |  |  | 24h | 24h | 4,800 | 4,800 |
| 21 | 2.4.1 | 识别风险 | manual | 1d | 2020-11-05 A | 2020-11-05 A |  | 100% |  |  |  | 项目经理（任锐媛） | 8h | 8h | 1,600 | 1,600 |
| 22 | 2.4.2 | 风险分析 | manual | 1d | 2020-11-06 A | 2020-11-06 A |  | 100% |  |  |  | 项目经理（任锐媛） | 8h | 8h | 1,600 | 1,600 |
| 23 | 2.4.3 | 制定风险手册 | manual | 1d | 2020-11-07 A | 2020-11-07 A |  | 100% |  |  |  | 项目经理（任锐媛） | 8h | 8h | 1,600 | 1,600 |
| 24 | 3 | **执行与监控** |  | 18d | 2020-11-08 A | 2020-12-01 |  | 99% | 0d |  |  | 储备资金 [0.1%]; 间接成本 [0.1%] | 608h | 608h | 41,580 | 35,080 |
| 25 | 3.1 | 组件项目团队 | manual | 1d | 2020-11-08 A | 2020-11-08 A |  | 100% |  |  |  | 项目经理（任锐媛） | 8h | 8h | 1,600 | 1,600 |

| ID | WBS | Task | Type | Duration | Start | Finish | Predecessors | Complete | Remaining | Resources | Work | Actual work | Cost | Actual cost |
| --- | --- | --- | --- | --- | --- | --- | --- | --- | --- | --- | --- | --- | --- | --- |
| 26 | 3.2 | **项目执行** |  | 14d | 2020-11-09 A | 2020-11-26 A | 25 | 100% |  |  | 256h | 256h | 11,520 | 11,520 |
| 27 | 3.2.1 | 首页模块 | manual | 4d | 2020-11-09 A | 2020-11-12 A |  | 100% |  | 程序员1（任锐媛） | 32h | 32h | 1,440 | 1,440 |
| 28 | 3.2.2 | 用户模块 | manual | 2d | 2020-11-13 A | 2020-11-14 A |  | 100% |  | 程序员5（梁钰钊） | 16h | 16h | 720 | 720 |
| 29 | 3.2.3 | 笔记模块 | manual | 4d | 2020-11-15 A | 2020-11-18 A |  | 100% |  | 程序员3（田春雨）; 程序员4（于喜梅） | 64h | 64h | 2,880 | 2,880 |
| 30 | 3.2.4 | 发现模块 | manual | 3d | 2020-11-19 A | 2020-11-21 A |  | 100% |  | 程序员2（张硕） | 24h | 24h | 1,080 | 1,080 |
| 31 | 3.2.5 | 线上旅游模块 | manual | 4d | 2020-11-22 A | 2020-11-25 A |  | 100% |  | 程序员5（梁钰钊）; 程序员7（姚元玲） | 64h | 64h | 2,880 | 2,880 |
| 32 | 3.2.6 | 功能展示 | manual | 1d | 2020-11-26 A | 2020-11-26 A |  | 100% |  | 程序员1（任锐媛）; 程序员2（张硕）; 程序员3（田春雨）; 程序员4（于喜梅）; 程序员5（梁钰钊）; 程序员6（张杰）; 程序员7（姚元玲） | 56h | 56h | 2,520 | 2,520 |
| 33 | 3.3 | **项目监控** |  | 2d | 2020-11-27 A | 2020-11-29 A |  | 100% |  |  | 160h | 160h | 10,840 | 10,840 |
| 34 | 3.3.1 | 各项指标监控 | manual | 1d | 2020-11-27 A | 2020-11-27 A |  | 100% |  | 测试员1（姚元玲）; 测试员2（张硕）; 质量专家（梁钰钊） | 24h | 24h | 1,440 | 1,440 |
| 35 | 3.3.2 | 监控评审 | manual | 1d | 2020-11-28 A | 2020-11-28 A |  | 100% |  | 测试员1（姚元玲）; 测试员2（张硕）; 质量专家（梁钰钊） | 24h | 24h | 1,440 | 1,440 |
| 36 | 3.3.3 | 例会 | manual | 1d | 2020-11-29 A | 2020-11-29 A |  | 100% |  | UI专家（田春雨）; 测试员1（姚元玲）; 测试员2（张硕）; 程序员1（任锐媛）; 程序员2（张硕）; 程序员3（田春雨）; 程序员4（于喜梅）; 程序员5（梁钰钊）; 程序员6（张杰）; 程序员7（姚元玲）; 设计专家（张杰）; 项目经理（任锐媛）; 需求专家（于喜梅）; 质量专家（梁钰钊） | 112h | 112h | 7,960 | 7,960 |
| 37 | 3.4 | **团队建设** |  | 2d | 2020-11-30 A | 2020-12-01 A |  | 100% |  |  | 184h | 184h | 11,120 | 11,120 |
| 38 | 3.4.1 | 培训 | manual | 1d | 2020-11-30 A | 2020-11-30 A |  | 100% |  | 测试员1（姚元玲）; 测试员2（张硕）; 程序员1（任锐媛）; 程序员2（张硕）; 程序员3（田春雨）; 程序员4（于喜梅）; 程序员5（梁钰钊）; 程序员6（张杰）; 程序员7（姚元玲） | 72h | 72h | 3,160 | 3,160 |
| 39 | 3.4.2 | 娱乐 | manual | 1d | 2020-12-01 A | 2020-12-01 A |  | 100% |  | UI专家（田春雨）; 测试员1（姚元玲）; 测试员2（张硕）; 程序员1（任锐媛）; 程序员2（张硕）; 程序员3（田春雨）; 程序员4（于喜梅）; 程序员5（梁钰钊）; 程序员6（张杰）; 程序员7（姚元玲）; 设计专家（张杰）; 项目经理（任锐媛）; 需求专家（于喜梅）; 质量专家（梁钰钊） | 112h | 112h | 7,960 | 7,960 |
| 40 | 4 | **收尾** |  | 2d | 2020-12-02 A | 2020-12-03 |  | 99% | 0d | 储备资金 [0.1%]; 间接成本 [0.1%] | 224h | 224h | 20,512 | 15,920 |
| 41 | 4.1 | 项目终验 | manual | 1d | 2020-12-02 A | 2020-12-02 A |  | 100% |  | UI专家（田春雨）; 测试员1（姚元玲）; 测试员2（张硕）; 程序员1（任锐媛）; 程序员2（张硕）; 程序员3（田春雨）; 程序员4（于喜梅）; 程序员5（梁钰钊）; 程序员6（张杰）; 程序员7（姚元玲）; 设计专家（张杰）; 项目经理（任锐媛）; 需求专家（于喜梅）; 质量专家（梁钰钊） | 112h | 112h | 7,960 | 7,960 |
| 42 | 4.2 | 项目收尾 | manual | 1d | 2020-12-03 A | 2020-12-03 A |  | 100% |  | UI专家（田春雨）; 测试员1（姚元玲）; 测试员2（张硕）; 程序员1（任锐媛）; 程序员2（张硕）; 程序员3（田春雨）; 程序员4（于喜梅）; 程序员5（梁钰钊）; 程序员6（张杰）; 程序员7（姚元玲）; 设计专家（张杰）; 项目经理（任锐媛）; 需求专家（于喜梅）; 质量专家（梁钰钊） | 112h | 112h | 7,960 | 7,960 |
